# 推推棒开发计划

Schedule from MS Project, 2019-08-07 to 2019-09-13.

## Calendars

- Standard: Mon-Fri 08:00-12:00, 13:00-17:00; Sat-Sun off.

## Resources

| Resource |
| --- |
| Alan |
| 蒋慧琳 |
| 李青天 |

## Schedule

| ID | WBS | Task | Duration | Start | Finish | Total slack | Constraint | Resources | Work |
| --- | --- | --- | --- | --- | --- | --- | --- | --- | --- |
| 1 | 1 | **基础工作** | 7.03d | 2019-08-07 | 2019-08-16 | 20d |  |  | 128h |
| 2 | 1.1 | 架构设计 | 2d | 2019-08-08 | 2019-08-09 | 25d |  | Alan | 16h |
| 3 | 1.2 | 前后端框架搭建 | 5d | 2019-08-12 | 2019-08-16 | 20d | start no earlier than 2019-08-12 | Alan | 40h |
| 4 | 1.3 | 集成权限和消息 | 5d | 2019-08-12 | 2019-08-16 | 20d | start no earlier than 2019-08-12 | 李青天 | 40h |
| 5 | 1.4 | **技术准备** | 2d | 2019-08-07 | 2019-08-09 | 25.03d | start no earlier than 2019-08-07 |  | 32h |
| 6 | 1.4.1 | 学习vue+elementui | 2d | 2019-08-07 | 2019-08-09 | 25.03d |  | 蒋慧琳 | 16h |
| 7 | 1.4.2 | 学习vue+elementui | 2d | 2019-08-07 | 2019-08-09 | 25.03d |  | 李青天 | 16h |
| 8 | 2 | **客服工单流程** | 20d | 2019-08-12 | 2019-09-06 | 5d |  |  | 256h |
| 9 | 2.1 | 工单流程图开发 | 2d | 2019-08-19 | 2019-08-20 | 18d | start no earlier than 2019-08-19 | Alan | 16h |
| 10 | 2.2 | **工单创建** | 10d | 2019-08-12 | 2019-08-23 | 15d |  |  | 80h |
| 11 | 2.2.1 | PC端 | 5d | 2019-08-12 | 2019-08-16 | 20d | start no earlier than 2019-08-12 | 蒋慧琳 | 40h |
| 12 | 2.2.2 | 企业微信端 | 5d | 2019-08-19 | 2019-08-23 | 15d | start no earlier than 2019-08-19 | 蒋慧琳 | 40h |
| 13 | 2.3 | 工单列表 | 5d | 2019-08-26 | 2019-08-30 | 10d | start no earlier than 2019-08-26 | 蒋慧琳 | 40h |
| 14 | 2.4 | 流程自测 | 15d | 2019-08-19 | 2019-09-06 | 5d | start no earlier than 2019-08-19 | Alan | 120h |
| 15 | 3 | **我的任务** | 9.38d | 2019-08-20 | 2019-09-02 | 9d | start no earlier than 2019-08-20 |  | 88h |
| 16 | 3.1 | 任务处理页面前后端 | 5d | 2019-08-20 | 2019-08-27 | 13.38d | start no earlier than 2019-08-20 | Alan | 40h |
| 17 | 3.2 | 任务通知 | 3d | 2019-08-26 | 2019-08-28 | 12d | start no earlier than 2019-08-26 | Alan | 24h |
| 18 | 3.3 | 任务超时提醒 | 3d | 2019-08-29 | 2019-09-02 | 9d | start no earlier than 2019-08-29 | Alan | 24h |
| 19 | 4 | **流程维护** | 12.81d | 2019-08-19 | 2019-09-04 | 7.19d |  |  | 160h |
| 20 | 4.1 | 流程定义管理 | 5d | 2019-08-19 | 2019-08-23 | 15d | start no earlier than 2019-08-19 | 李青天 | 40h |
| 21 | 4.2 | 流程实例管理 | 5d | 2019-08-23 | 2019-08-30 | 10.06d | start no earlier than 2019-08-23 | 李青天 | 40h |
| 22 | 4.3 | 历史流程 | 5d | 2019-08-28 | 2019-09-04 | 7.19d | start no earlier than 2019-08-28 | 李青天 | 40h |
| 23 | 4.4 | 工作模式及其工作日设置 | 5d | 2019-08-19 | 2019-08-23 | 15d | start no earlier than 2019-08-19 | Alan | 40h |
| 24 | 5 | 操作日志 | 2d | 2019-09-05 | 2019-09-06 | 5d | start no earlier than 2019-09-05 | 李青天 | 16h |
| 25 | 6 | 报表 | 5d | 2019-09-02 | 2019-09-06 | 5d | start no earlier than 2019-09-02 | 蒋慧琳 | 40h |
| 26 | 7 | 功能测试和联调 | 5d | 2019-09-09 | 2019-09-13 | 0d | start no earlier than 2019-09-09 | Alan; 蒋慧琳; 李青天 | 120h |
